Schedule from MS Project, 2025-09-08 to 2026-05-29, costs in ₽, A marks actual dates.

## Calendars

- Standard: Mon-Fri 08:00-12:00, 13:00-17:00; Sat-Sun off.

## Resources

| Resource | Rate |
| --- | --- |
| Заказчик(фонд) |  |
| Руководитель |  |
| Разработчик | 400 |

## Schedule

| ID | WBS | Task | Type | Duration | Start | Finish | Predecessors | Complete | Remaining | Baseline start | Baseline finish | Baseline duration | Total slack | Resources | Work | Actual work | Cost | Baseline cost | Actual cost |
| --- | --- | --- | --- | --- | --- | --- | --- | --- | --- | --- | --- | --- | --- | --- | --- | --- | --- | --- | --- |
| 1 | 1 | **Проект** |  | 190d | 2025-09-08 A | 2026-05-29 |  | 12% | 168d | 2025-09-08 | 2026-05-29 | 190d | 0d |  | 1550.4h | 188.8h | 608,000 | 608,000 | 70,400 |
| 2 | 1.1 | **Инициализация и планирование проекта** |  | 22d | 2025-09-08 A | 2025-10-07 A |  | 100% |  | 2025-09-08 | 2025-10-07 | 22d |  |  | 188.8h | 188.8h | 70,400 | 70,400 | 70,400 |
| 3 | 1.1.1 | Анализ предметной области |  | 7d | 2025-09-08 A | 2025-09-16 A |  | 100% |  | 2025-09-08 | 2025-09-16 | 7d |  | Разработчик | 56h | 56h | 22,400 | 22,400 | 22,400 |
| 4 | 1.1.2 | Обоснование реализуемости |  | 7d | 2025-09-17 A | 2025-09-25 A | 3 | 100% |  | 2025-09-17 | 2025-09-25 | 7d |  | Разработчик | 56h | 56h | 22,400 | 22,400 | 22,400 |
| 5 | 1.1.3 | Разработка и согласование устава проекта |  | 5d | 2025-09-26 A | 2025-10-02 A | 4 | 100% |  | 2025-09-26 | 2025-10-02 | 5d |  | Руководитель [20%]; Разработчик | 48h | 48h | 16,000 | 16,000 | 16,000 |
| 6 | 1.1.4 | Утверждение плана проекта |  | 3d | 2025-10-03 A | 2025-10-07 A | 5 | 100% |  | 2025-10-03 | 2025-10-07 | 3d |  | Разработчик; Руководитель [20%] | 28.8h | 28.8h | 9,600 | 9,600 | 9,600 |
| 7 | 1.1.5 | План проекта утверждён | milestone | 0d | 2025-10-07 A | 2025-10-07 A | 6 | 100% |  | 2025-10-07 | 2025-10-07 | 0d |  |  |  |  |  |  |  |
| 8 | 1.2 | **Формализация предметной области** |  | 17d | 2025-10-08 | 2025-10-30 |  |  |  | 2025-10-08 | 2025-10-30 | 17d | 0d |  | 147.2h |  | 54,400 | 54,400 |  |
| 9 | 1.2.1 | Анализ методов глобальной оптимизации |  | 7d | 2025-10-08 | 2025-10-16 | 7 |  |  | 2025-10-08 | 2025-10-16 | 7d | 0d | Разработчик; Руководитель [20%] | 67.2h |  | 22,400 | 22,400 |  |
| 10 | 1.2.2 | Формирование тестовых эпидемиологических моделей |  | 7d | 2025-10-17 | 2025-10-27 | 9 |  |  | 2025-10-17 | 2025-10-27 | 7d | 0d | Разработчик | 56h |  | 22,400 | 22,400 |  |
| 11 | 1.2.3 | Генерация синтетических данных |  | 3d | 2025-10-28 | 2025-10-30 | 10 |  |  | 2025-10-28 | 2025-10-30 | 3d | 0d | Разработчик | 24h |  | 9,600 | 9,600 |  |
| 12 | 1.2.4 | Модели и данные подготовлены | milestone | 0d | 2025-10-30 | 2025-10-30 | 11 |  |  | 2025-10-30 | 2025-10-30 | 0d | 0d |  |  |  |  |  |  |
| 13 | 1.3 | **Проектирование архитектуры** |  | 18d | 2025-10-31 | 2025-11-25 |  |  |  | 2025-10-31 | 2025-11-25 | 18d | 0d |  | 150.4h |  | 57,600 | 57,600 |  |
| 14 | 1.3.1 | Построение диаграмм Use Case |  | 3d | 2025-10-31 | 2025-11-04 | 12 |  |  | 2025-10-31 | 2025-11-04 | 3d | 0d | Разработчик | 24h |  | 9,600 | 9,600 |  |
| 15 | 1.3.2 | Построение диаграмм потоков данных (DFD) |  | 4d | 2025-11-05 | 2025-11-10 | 14 |  |  | 2025-11-05 | 2025-11-10 | 4d | 0d | Разработчик | 32h |  | 12,800 | 12,800 |  |
| 16 | 1.3.3 | Проектирование логических компонентов системы (component diagram) |  | 4d | 2025-11-11 | 2025-11-14 | 15 |  |  | 2025-11-11 | 2025-11-14 | 4d | 0d | Разработчик | 32h |  | 12,800 | 12,800 |  |
| 17 | 1.3.4 | Описание API между модулями |  | 3d | 2025-11-17 | 2025-11-19 | 16 |  |  | 2025-11-17 | 2025-11-19 | 3d | 0d | Разработчик | 24h |  | 9,600 | 9,600 |  |
| 18 | 1.3.5 | Создание ТЗ |  | 4d | 2025-11-20 | 2025-11-25 | 17 |  |  | 2025-11-20 | 2025-11-25 | 4d | 0d | Разработчик; Руководитель [20%] | 38.4h |  | 12,800 | 12,800 |  |
| 19 | 1.3.6 | ТЗ утверждено | milestone | 0d | 2025-11-25 | 2025-11-25 | 18 |  |  | 2025-11-25 | 2025-11-25 | 0d | 0d |  |  |  |  |  |  |
| 20 | 1.4 | **Разработка модуля глобальной оптимизации** |  | 39d | 2025-11-26 | 2026-01-19 |  |  |  | 2025-11-26 | 2026-01-19 | 39d | 0d |  | 312h |  | 124,800 | 124,800 |  |
| 21 | 1.4.1 | Реализация DE |  | 5d | 2025-11-26 | 2025-12-02 | 19 |  |  | 2025-11-26 | 2025-12-02 | 5d | 0d | Разработчик | 40h |  | 16,000 | 16,000 |  |
| 22 | 1.4.2 | Реализация GA |  | 5d | 2025-12-03 | 2025-12-09 | 21 |  |  | 2025-12-03 | 2025-12-09 | 5d | 0d | Разработчик | 40h |  | 16,000 | 16,000 |  |
| 23 | 1.4.3 | Реализация PSO |  | 5d | 2025-12-10 | 2025-12-16 | 22 |  |  | 2025-12-10 | 2025-12-16 | 5d | 0d | Разработчик | 40h |  | 16,000 | 16,000 |  |
| 24 | 1.4.4 | Реализация BO |  | 5d | 2025-12-17 | 2025-12-23 | 23 |  |  | 2025-12-17 | 2025-12-23 | 5d | 0d | Разработчик | 40h |  | 16,000 | 16,000 |  |
| 25 | 1.4.5 | Реализация HMER |  | 5d | 2025-12-24 | 2025-12-30 | 24 |  |  | 2025-12-24 | 2025-12-30 | 5d | 0d | Разработчик | 40h |  | 16,000 | 16,000 |  |
| 26 | 1.4.6 | Тестирование методов |  | 7d | 2025-12-31 | 2026-01-08 | 25 |  |  | 2025-12-31 | 2026-01-08 | 7d | 0d | Разработчик | 56h |  | 22,400 | 22,400 |  |
| 27 | 1.4.7 | Интеграция методов в единое ядро |  | 7d | 2026-01-09 | 2026-01-19 | 26 |  |  | 2026-01-09 | 2026-01-19 | 7d | 0d | Разработчик | 56h |  | 22,400 | 22,400 |  |
| 28 | 1.4.8 | Модуль оптимизации разработан | milestone | 0d | 2026-01-19 | 2026-01-19 | 27 |  |  | 2026-01-19 | 2026-01-19 | 0d | 94d |  |  |  |  |  |  |

| ID | WBS | Task | Type | Duration | Start | Finish | Predecessors | Baseline start | Baseline finish | Baseline duration | Total slack | Resources | Work | Cost | Baseline cost |
| --- | --- | --- | --- | --- | --- | --- | --- | --- | --- | --- | --- | --- | --- | --- | --- |
| 29 | 1.5 | **Модуль верификации** |  | 21d | 2026-01-20 | 2026-02-17 |  | 2026-01-20 | 2026-02-17 | 21d | 0d |  | 168h | 67,200 | 67,200 |
| 30 | 1.5.1 | Реализация проверки достоверности параметров |  | 5d | 2026-01-20 | 2026-01-26 | 27 | 2026-01-20 | 2026-01-26 | 5d | 0d | Разработчик | 40h | 16,000 | 16,000 |
| 31 | 1.5.2 | Реализация анализа чувствительности |  | 4d | 2026-01-27 | 2026-01-30 | 30 | 2026-01-27 | 2026-01-30 | 4d | 0d | Разработчик | 32h | 12,800 | 12,800 |
| 32 | 1.5.3 | Реализация симуляций для оценки ошибок |  | 4d | 2026-02-02 | 2026-02-05 | 31 | 2026-02-02 | 2026-02-05 | 4d | 0d | Разработчик | 32h | 12,800 | 12,800 |
| 33 | 1.5.4 | Интеграция с оптимизационным ядром |  | 4d | 2026-02-06 | 2026-02-11 | 32 | 2026-02-06 | 2026-02-11 | 4d | 0d | Разработчик | 32h | 12,800 | 12,800 |
| 34 | 1.5.5 | Тестирование |  | 3d | 2026-02-12 | 2026-02-16 | 33 | 2026-02-12 | 2026-02-16 | 3d | 0d | Разработчик | 24h | 9,600 | 9,600 |
| 35 | 1.5.6 | Документирование |  | 1d | 2026-02-17 | 2026-02-17 | 34 | 2026-02-17 | 2026-02-17 | 1d | 0d | Разработчик | 8h | 3,200 | 3,200 |
| 36 | 1.5.7 | Модуль верификации разработан | milestone | 0d | 2026-02-17 | 2026-02-17 | 35 | 2026-02-17 | 2026-02-17 | 0d | 73d | Разработчик |  |  |  |
| 37 | 1.6 | **Модуль интеграции данных** |  | 20d | 2026-02-18 | 2026-03-17 |  | 2026-02-18 | 2026-03-17 | 20d | 0d |  | 160h | 64,000 | 64,000 |
| 38 | 1.6.1 | Реализация подключения к внешним источникам |  | 7d | 2026-02-18 | 2026-02-26 | 35 | 2026-02-18 | 2026-02-26 | 7d | 0d | Разработчик | 56h | 22,400 | 22,400 |
| 39 | 1.6.2 | Модуль очистки и нормализации данных |  | 3d | 2026-02-27 | 2026-03-03 | 38 | 2026-02-27 | 2026-03-03 | 3d | 0d | Разработчик | 24h | 9,600 | 9,600 |
| 40 | 1.6.3 | Модуль валидации данных |  | 3d | 2026-03-04 | 2026-03-06 | 39 | 2026-03-04 | 2026-03-06 | 3d | 0d | Разработчик | 24h | 9,600 | 9,600 |
| 41 | 1.6.4 | Тестирование |  | 4d | 2026-03-09 | 2026-03-12 | 40 | 2026-03-09 | 2026-03-12 | 4d | 0d | Разработчик | 32h | 12,800 | 12,800 |
| 42 | 1.6.5 | Документирование |  | 3d | 2026-03-13 | 2026-03-17 | 41 | 2026-03-13 | 2026-03-17 | 3d | 0d | Разработчик | 24h | 9,600 | 9,600 |
| 43 | 1.6.6 | Модуль интеграции данных разработан | milestone | 0d | 2026-03-17 | 2026-03-17 | 42 | 2026-03-17 | 2026-03-17 | 0d | 53d |  |  |  |  |
| 44 | 1.7 | **Разработка веб-интерфейса визуализации** |  | 24d | 2026-03-18 | 2026-04-20 |  | 2026-03-18 | 2026-04-20 | 24d | 0d |  | 192h | 76,800 | 76,800 |
| 45 | 1.7.1 | Реализация интерфейса параметризации |  | 5d | 2026-03-18 | 2026-03-24 | 42 | 2026-03-18 | 2026-03-24 | 5d | 0d | Разработчик | 40h | 16,000 | 16,000 |
| 46 | 1.7.2 | Реализация интерфейса верификации |  | 5d | 2026-03-25 | 2026-03-31 | 45 | 2026-03-25 | 2026-03-31 | 5d | 0d | Разработчик | 40h | 16,000 | 16,000 |
| 47 | 1.7.3 | Интеграция с backend API |  | 7d | 2026-04-01 | 2026-04-09 | 46 | 2026-04-01 | 2026-04-09 | 7d | 0d | Разработчик | 56h | 22,400 | 22,400 |
| 48 | 1.7.4 | Тестирование интерфейса |  | 4d | 2026-04-10 | 2026-04-15 | 47 | 2026-04-10 | 2026-04-15 | 4d | 0d | Разработчик | 32h | 12,800 | 12,800 |
| 49 | 1.7.5 | Документирование |  | 3d | 2026-04-16 | 2026-04-20 | 48 | 2026-04-16 | 2026-04-20 | 3d | 0d | Разработчик | 24h | 9,600 | 9,600 |
| 50 | 1.7.6 | Веб-интерфейс разработан | milestone | 0d | 2026-04-20 | 2026-04-20 | 49 | 2026-04-20 | 2026-04-20 | 0d | 29d |  |  |  |  |
| 51 | 1.8 | **Интеграция всех модулей** |  | 17d | 2026-04-21 | 2026-05-13 |  | 2026-04-21 | 2026-05-13 | 17d | 0d |  | 136h | 54,400 | 54,400 |
| 52 | 1.8.1 | Подключение всех API |  | 7d | 2026-04-21 | 2026-04-29 | 49 | 2026-04-21 | 2026-04-29 | 7d | 0d | Разработчик | 56h | 22,400 | 22,400 |
| 53 | 1.8.2 | Тестирование функциональной целостности |  | 5d | 2026-04-30 | 2026-05-06 | 52 | 2026-04-30 | 2026-05-06 | 5d | 0d | Разработчик | 40h | 16,000 | 16,000 |
| 54 | 1.8.3 | Тестирование отказоустойчивости |  | 5d | 2026-05-07 | 2026-05-13 | 53 | 2026-05-07 | 2026-05-13 | 5d | 0d | Разработчик | 40h | 16,000 | 16,000 |
| 55 | 1.8.4 | Продукт функционирует | milestone | 0d | 2026-05-13 | 2026-05-13 | 54 | 2026-05-13 | 2026-05-13 | 0d | 0d |  |  |  |  |

| ID | WBS | Task | Type | Duration | Start | Finish | Predecessors | Baseline start | Baseline finish | Baseline duration | Total slack | Resources | Work | Cost | Baseline cost |
| --- | --- | --- | --- | --- | --- | --- | --- | --- | --- | --- | --- | --- | --- | --- | --- |
| 56 | 1.9 | **Завершение проекта** |  | 12d | 2026-05-14 | 2026-05-29 |  | 2026-05-14 | 2026-05-29 | 12d | 0d |  | 96h | 38,400 | 38,400 |
| 57 | 1.9.1 | Подготовка пользовательских инструкций |  | 7d | 2026-05-14 | 2026-05-22 | 55 | 2026-05-14 | 2026-05-22 | 7d | 0d | Разработчик | 56h | 22,400 | 22,400 |
| 58 | 1.9.2 | Согласование с заказчиком |  | 5d | 2026-05-22 | 2026-05-29 | 57 | 2026-05-22 | 2026-05-29 | 5d | 0d | Заказчик(фонд); Разработчик | 40h | 16,000 | 16,000 |
| 59 | 1.9.3 | Продукт принят | milestone | 0d | 2026-05-29 | 2026-05-29 | 58 | 2026-05-29 | 2026-05-29 | 0d | 0d |  |  |  |  |
